# 4386750u250601 - E. Red Bay Rd. over Turkey Creek

How a schedule from Primavera P6 changed from version to version. A marks actual dates.

## Version 1 (data date 2025-06-01, saved 2025-08-14, file 4386750u250601.xml)

Note of the change: chore: relocate project; feat: XER support + config + DB + UI; security: defusedxml; build: requirements + .gitignore; test: smoke

| ID | WBS | Task | Duration | Start | Finish | Predecessors | Complete | Constraint |
| --- | --- | --- | --- | --- | --- | --- | --- | --- |
|  | Milestones | **Milestones** |  | 2024-01-31 | 2025-09-03 |  |  |  |
| M1000 |  | Award Date - 1/31/24 | 0d | 2024-01-31 A | 2024-01-31 A |  | 100% | start on or after 2024-01-31 |
| M1010 |  | Contract Execution Date - 02/13/24 | 0d | 2024-02-13 A | 2024-02-13 A | M1000 | 100% | start on or after 2024-02-13 |
| M1050 |  | Notice to Proceed | 0d | 2024-02-27 A | 2024-02-27 A | M1010 | 100% | start on or after 2024-02-27 |
| M1020 |  | Insurance Renewal Date - 3/31/24 | 0d | 2024-03-31 A | 2024-03-31 A |  | 100% | finish on 2024-03-31 |
| M1060 |  | Begin Work | 0d | 2024-05-27 A | 2024-05-27 A | A1010 | 100% |  |
| M1070 |  | 2nd Mobilization Payment | 0d | 2024-06-06 A | 2024-06-06 A | A1010 FS+21d | 100% |  |
| M1080 |  | Begin Bridge | 0d | 2024-09-04 A | 2024-09-04 A | A1500 SS | 100% |  |
| M1030 |  | Insurance Renewal Date - 3/31/25 | 0d | 2025-03-31 A | 2025-03-31 A |  | 100% | finish on 2025-03-31 |
| M1090 |  | Begin Paving | 0d | 2025-07-25 | 2025-07-25 | A1290 SS |  |  |
| M1100 |  | Open New Bridge to Traffic | 0d | 2025-08-20 | 2025-08-20 | A1780, A1790 |  |  |
| M1040 |  | Insurance Renewal Date - 3/31/26 | 0d | 2025-09-03 | 2025-09-03 |  |  | as late as possible |
| M1110 |  | Substantial Completion | 0d | 2025-09-03 | 2025-09-03 | A1020 FF, A1040 FF, A1820 FF, M1090, M1080, A1780 FF, M1070, A1030 FF, M1100, A1830 FF, A1570 FF, A1050 FF, W1050 |  | finish on or before 2025-06-30 |
| M1120 |  | As-Built CPM Schedule Submission | 0d | 2025-09-03 | 2025-09-03 | M1110 |  |  |
| M1130 |  | Final Completion | 0d | 2025-09-03 | 2025-09-03 | M1120 |  |  |
|  | General Conditions | **General Conditions** |  | 2024-04-02 | 2025-09-03 |  |  |  |
| A1000 |  | Baseline CPM Submission | 1d | 2024-04-02 A | 2024-06-13 A | M1010 | 100% | start on or after 2024-04-02 |
| A1010 |  | Mobilization | 1d | 2024-05-07 A | 2024-05-07 A | M1050 SS, A1000 SS | 100% |  |
| A1020 |  | Traffic Control | 314d | 2024-05-07 A | 2025-09-03 | A1010 SS | 74% |  |
| A1030 |  | Construction Stakes, Lines, & Grades | 314d | 2024-05-07 A | 2025-09-03 | A1010 SS | 70% |  |
| A1040 |  | Install/Maintain Erosion Control | 314d | 2024-05-07 A | 2025-09-03 | A1010 SS | 70% |  |
| A1060 |  | Install Perm Construction Signs | 1d | 2024-05-07 A | 2024-05-07 A | A1010 SS | 100% |  |
| A1080 |  | Clearing & Grubbing | 10d | 2024-05-27 A | 2024-06-20 A | M1060 SS, A1060, A1000 FF | 100% |  |
| A1085 |  | Clearing & Grubbing - High Street | 2d | 2024-06-17 A | 2024-06-20 A | A1080 FF | 100% |  |
| A1070 |  | Bridge Mobilization | 5d | 2024-08-19 A | 2024-08-19 A | A1060 | 100% |  |
| A1050 |  | Moving and Demo Items | 194d | 2024-09-04 A | 2025-09-03 | A1380 SS | 70% |  |
|  | Submittals | **Submittals** |  | 2024-06-18 | 2024-12-10 |  |  |  |
| S1030 |  | Prestressed Girders - Submittal (formerly Concrete Slab for Slopes) | 5d | 2024-06-18 A | 2024-06-18 A | A1010 SS | 100% |  |
| S1040 |  | SCDOT Review/Approval - Prestressed Girders (formerly Concrete Slab for Slopes) | 15d | 2024-06-18 A | 2024-06-27 A | S1030 | 100% |  |
| S1050 |  | Lead Time - Prestressed Girders (formerly Concrete Slab for Slopes) | 45d | 2024-07-01 A | 2024-12-10 A | S1040 | 100% |  |
| S1000 |  | Helical Anchor Submittal | 5d | 2024-08-22 A | 2024-08-22 A | A1010 SS | 100% |  |
| S1010 |  | SCDOT Review/Approval - Helical Anchor | 15d | 2024-08-23 A | 2024-08-23 A | S1000 | 100% |  |
| S1020 |  | Lead Time - Helical Anchors | 25d | 2024-08-23 A | 2024-08-30 A | S1010 | 100% |  |
|  | Utility | **Utility Relocations** |  | 2024-06-20 | 2025-07-22 |  |  |  |
| U1000 |  | Utility Relocation Window | 90d | 2024-06-20 A | 2024-09-17 A | A1080 | 100% |  |
| U1010 |  | Utility Relocation - Duke Energy - Distribution | 90d | 2024-06-20 A | 2024-07-31 A | A1080 | 100% |  |
| U1020 |  | Utility Relocation - Duke Energy - Transmission | 90d | 2024-06-20 A | 2024-07-31 A | A1080 | 100% |  |
| U1030 |  | Utility Relocation - City of Sumter - Water/Sewer | 90d | 2024-06-20 A | 2024-06-28 A | A1080 | 100% |  |
| U1040 |  | Utility Relocation - Dominion - Gas | 90d | 2024-06-20 A | 2024-10-19 A | A1080 | 100% |  |
| U1050 |  | Utility Relocation - Farmers Telephone - Communications | 90d | 2024-06-20 A | 2024-07-31 A | A1080 | 100% |  |
| U1070 |  | Utility Relocation - Spectrum/Charter - Communications | 90d | 2024-06-20 A | 2024-07-31 A | A1080 | 100% |  |
| U1080 |  | Utility Relocation - CSX - Traffic | 90d | 2024-06-20 A | 2024-07-31 A | A1080 | 100% |  |
| U1060 |  | Utility Relocation - Frontier Telephone - Communications | 90d | 2024-08-01 A | 2024-08-15 A | A1080 | 100% |  |
| W1000 |  | Install Relocated Waterline - Directional Bore under creek | 8d | 2025-06-02 | 2025-06-11 | A1080, U1000, U1010, U1020, U1040, U1050, U1060, U1070, U1080, A1090 |  |  |
| W1010 |  | Install Relocated Waterline - NE side of creek | 4d | 2025-06-12 | 2025-06-17 | W1000 |  |  |
| W1020 |  | Install Relocated Waterline - NW side of creek | 6d | 2025-06-18 | 2025-06-25 | W1010 |  |  |
| W1030 |  | Install Relocated Waterline - Crossing at 49+40 | 3d | 2025-06-26 | 2025-06-30 | W1020 |  |  |
| W1040 |  | Install Relocated Waterline - South side of creek | 8d | 2025-07-01 | 2025-07-11 | W1030 |  |  |
| W1050 |  | Waterline Testing and Tie-in | 7d | 2025-07-14 | 2025-07-22 | W1010, W1000, W1020, W1040, W1030 |  |  |
|  | phase 1 | **Phase I - Construct E. Red Bay Rd. and Bridge** |  | 2024-09-04 | 2025-08-14 |  |  |  |
|  | Grading | **Grading Operations - E. Red Bay Rd.** |  | 2025-02-19 | 2025-08-13 |  |  |  |
| A1090 |  | Rough Grading - East side | 22d | 2025-02-19 A | 2025-03-04 A | U1000, U1010, U1020, U1040, U1050, U1060, U1070, U1080 | 100% |  |
| A1100 |  | Settlement Period - East side | 50d | 2025-02-28 A | 2025-04-23 A | A1090 | 100% |  |
| A1110 |  | Rough Grading - West side | 22d | 2025-03-10 A | 2025-04-09 A | U1000, U1010, U1020, U1030 FF, U1040, U1050, U1060, U1070, U1080, A1090 | 100% |  |
| A1120 |  | Settlement Period - West side | 50d | 2025-04-10 A | 2025-05-30 A | A1110 FF | 100% |  |
| A1130 |  | Install Storm Drainage 45+83 - 50+50 LT | 12d | 2025-05-05 A | 2025-05-20 A | A1090, U1030 | 100% |  |
| A1140 |  | Install Storm Drainage NP-306, NP-307, NP-308 | 7d | 2025-05-20 A | 2025-05-28 A | A1130 | 100% |  |
| A1180 |  | Install Storm Drainage 45+30 - 42+23 LT | 12d | 2025-05-26 A | 2025-06-09 | A1170 FF, A1110 | 35% |  |
| A1150 |  | Install Storm Drainage Crossline at 49+52 | 3d | 2025-05-29 A | 2025-06-02 | A1140 | 65% |  |
| A1160 |  | Install Storm Drainage Crossline at 48+19 | 3d | 2025-06-03 | 2025-06-05 | A1150 |  |  |
| A1170 |  | Install Storm Drainage DP-400 | 2d | 2025-06-06 | 2025-06-09 | A1160 |  |  |
| A1190 |  | Install Storm Drainage Crossline at 42+25 | 3d | 2025-06-10 | 2025-06-12 | A1180 |  |  |
| A1200 |  | Install Storm Drainage 42+25 - 40+39 RT | 4d | 2025-06-13 | 2025-06-18 | A1190 |  |  |
| A1210 |  | Install Storm Drainage Crossline at 40+39 | 4d | 2025-06-19 | 2025-06-24 | A1200 |  |  |
| A1220 |  | Install Curb & Gutter 51+00 - 46+15 RT | 2d | 2025-06-25 | 2025-06-26 | A1210 |  |  |
| A1230 |  | Install Curb & Gutter 45+00 - 39+85 RT | 2d | 2025-06-27 | 2025-06-30 | A1220 |  |  |
| A1240 |  | Install Curb & Gutter 39+85 - 45+00 LT | 2d | 2025-07-01 | 2025-07-02 | A1230 |  |  |
| A1250 |  | Install Curb & Gutter 46+15 - 51+00 LT | 2d | 2025-07-03 | 2025-07-07 | A1240 |  |  |
| A1260 |  | Install Sidewalk 50+15 - 51+00 LT | 5d | 2025-07-08 | 2025-07-14 | A1250 |  |  |
| A1270 |  | Fine Grading East Side | 8d | 2025-07-15 | 2025-07-24 | A1130, A1250, A1100, A1260 |  |  |

| ID | WBS | Task | Duration | Start | Finish | Predecessors | Complete |
| --- | --- | --- | --- | --- | --- | --- | --- |
| A1330 |  | Install Sidewalk at Bridge Ends | 6d | 2025-07-15 | 2025-07-22 | A1260, A1250, A1730 |  |
| A1340 |  | Install Concrete Driveways | 6d | 2025-07-23 | 2025-07-30 | A1330 |  |
| A1280 |  | Fine Grading West Side | 8d | 2025-07-25 | 2025-08-05 | A1270, A1240, A1120 |  |
| A1290 |  | Install Asphalt Base Course East side | 3d | 2025-07-25 | 2025-07-29 | A1270, A1730, A1100 |  |
| A1300 |  | Install Asphalt Binder Course East side | 3d | 2025-07-30 | 2025-08-01 | A1290 |  |
| A1310 |  | Install Asphalt Base Course West side | 3d | 2025-08-06 | 2025-08-08 | A1300, A1120, A1280 |  |
| A1320 |  | Install Asphalt Binder Course West side | 3d | 2025-08-11 | 2025-08-13 | A1310 |  |
|  | Grading-High | **Construct High St. Cul-de-Sac** |  | 2025-06-02 | 2025-08-14 |  |  |
| A1350 |  | Rough Grading - Cul-de-Sac | 4d | 2025-06-02 | 2025-06-05 | A1120 |  |
| A1360 |  | Install GABC - Cul-de-Sac | 4d | 2025-08-06 | 2025-08-11 | A1350, A1085, A1280 |  |
| A1370 |  | Fine Grading - Cul-de Sac | 3d | 2025-08-12 | 2025-08-14 | A1360 |  |
|  | Bridge Construction | **Bridge Construction** |  | 2024-09-04 | 2025-06-20 |  |  |
| A1380 |  | Bridge Demolition | 8d | 2024-09-04 A | 2024-09-10 A | A1070 | 100% |
| A1390 |  | Excavate for Gabion Basket - East Side | 2d | 2024-10-09 A | 2024-10-10 A | A1380, U1040 SS | 100% |
| A1400 |  | Install Helical Anchors - East Side | 5d | 2024-10-14 A | 2024-10-14 A | A1390, S1020 | 100% |
| A1410 |  | Install Rip Rap for Gabion Basket - East Side | 5d | 2024-10-14 A | 2024-10-30 A | A1400 | 100% |
| A1420 |  | Excavate for Gabion Basket - West Side | 2d | 2024-10-22 A | 2024-10-23 A | A1390 | 100% |
| A1430 |  | Install Helical Anchors - West Side | 5d | 2024-10-28 A | 2024-10-28 A | A1410, A1420, S1020 | 100% |
| A1440 |  | Install Rip Rap for Gabion Basket - West Side | 5d | 2024-10-28 A | 2024-11-22 A | A1430 | 100% |
|  | Substructure | **Substructure** |  | 2024-09-16 | 2024-12-11 |  |  |
|  | EB 1 | **End Bent 1** |  | 2024-10-09 | 2024-12-11 |  |  |
| A1450 |  | Drive H-Piles - EB 1 | 4d | 2024-10-09 A | 2024-10-18 A | A1070 | 100% |
| A1460 |  | Form EB 1 Cap & Wingwalls | 6d | 2024-11-25 A | 2024-12-03 A | A1450, A1540, A1440 | 100% |
| A1470 |  | Pour EB 1 Cap | 2d | 2024-12-04 A | 2024-12-04 A | A1460 | 100% |
| A1480 |  | Cure EB 1 Cap | 7d | 2024-12-05 A | 2024-12-11 A | A1470 | 100% |
| A1490 |  | Strip EB 1 Cap | 3d | 2024-12-06 A | 2024-12-09 A | A1470 | 100% |
|  | EB 2 | **End Bent 2** |  | 2024-09-16 | 2024-11-21 |  |  |
| A1500 |  | Drive H-Piles - EB 2 | 4d | 2024-09-16 A | 2024-09-30 A | A1070 | 100% |
| A1510 |  | Form EB 2 Cap & Wingwalls | 6d | 2024-10-31 A | 2024-11-12 A | A1500 | 100% |
| A1520 |  | Pour EB 2 Cap | 2d | 2024-11-13 A | 2024-11-13 A | A1510 | 100% |
| A1530 |  | Cure EB 2 Cap | 7d | 2024-11-14 A | 2024-11-21 A | A1520 | 100% |
| A1540 |  | Strip EB 2 Cap | 3d | 2024-11-15 A | 2024-11-18 A | A1520, A1530 | 100% |
|  | Superstructure | **Superstructure** |  | 2024-12-10 | 2025-06-05 |  |  |
| A1550 |  | Set Girders | 4d | 2024-12-10 A | 2024-12-10 A | A1530, A1540, A1480, A1490, S1050 | 100% |
| A1560 |  | Install Intermediate Diaphragms | 12d | 2024-12-11 A | 2024-12-12 A | A1550 | 100% |
| A1580 |  | Form End Bent Diaphragms | 8d | 2024-12-12 A | 2025-01-13 A | A1560 | 100% |
| A1590 |  | Install SIP Panels | 9d | 2024-12-16 A | 2024-12-20 A | A1580 SS | 100% |
| A1600 |  | Form Overhangs - Left | 8d | 2024-12-19 A | 2024-12-30 A | A1590 SS, A1580 SS | 100% |
| A1610 |  | Form Overhangs - Right | 8d | 2024-12-19 A | 2024-12-31 A | A1600 FF | 100% |
| A1630 |  | Form Headers | 6d | 2025-01-13 A | 2025-01-15 A | A1620 | 100% |
| A1620 |  | Install Deck Rebar | 10d | 2025-01-16 A | 2025-01-17 A | A1610 | 100% |
| A1640 |  | Install Deflection Joint | 4d | 2025-01-31 A | 2025-01-31 A | A1630 | 100% |
| A1650 |  | Set up Screed | 2d | 2025-02-05 A | 2025-02-07 A | A1640 | 100% |
| A1660 |  | Pour Deck | 2d | 2025-02-07 A | 2025-02-07 A | A1650 | 100% |
| A1670 |  | Cure Deck | 7d | 2025-02-07 A | 2025-02-13 A | A1660 | 100% |
| A1680 |  | Wreck End Bent Diaphragms | 4d | 2025-02-13 A | 2025-02-13 A | A1660 | 100% |
| A1690 |  | Wreck Overhangs | 4d | 2025-06-02 | 2025-06-05 | A1680 |  |
|  | Approach | **Approach Slabs** |  | 2025-03-18 | 2025-06-20 |  |  |
| A1700 |  | Form Approach Slabs | 6d | 2025-03-18 A | 2025-04-22 A | A1110 FF | 100% |
| A1710 |  | Pour Approach Slabs | 2d | 2025-05-22 A | 2025-05-22 A | A1700, A1670 | 100% |
| A1720 |  | Curing time for Approach Slabs | 3d | 2025-05-22 A | 2025-05-27 A | A1710 | 100% |
| A1730 |  | Wreck Approach Slabs | 5d | 2025-05-31 A | 2025-05-31 A | A1710 | 100% |
| A1740 |  | Pour Barrier Rail | 6d | 2025-06-02 | 2025-06-09 | A1720, A1730 |  |
| A1750 |  | Profilograph | 1d | 2025-06-10 | 2025-06-10 | A1740 |  |
| A1760 |  | Bridge Deck Grooving | 1d | 2025-06-11 | 2025-06-11 | A1690, A1750 |  |
| A1770 |  | FP & W Approach Curbs | 5d | 2025-06-12 | 2025-06-18 | A1740, A1760 |  |
| A1780 |  | Clean Up and Demobilize Bridge Construction | 2d | 2025-06-19 | 2025-06-20 | A1770 |  |
|  | phase 2 | **Phase 2 - Asphalt Surface and Permanent Striping** |  | 2025-08-15 | 2025-09-03 |  |  |
| A1790 |  | Install Asphalt Surface Course | 4d | 2025-08-15 | 2025-08-20 | A1300, A1710, A1720, A1730, A1370, A1320 |  |
| A1800 |  | Install Guardrail | 5d | 2025-08-21 | 2025-08-27 | A1790 |  |
| A1810 |  | Asphalt Curing time | 7d | 2025-08-21 | 2025-08-27 | A1790 |  |
| A1820 |  | Thermoplastic Striping and Perm Traffic Signs | 4d | 2025-08-28 | 2025-09-03 | A1810 |  |
| A1830 |  | Final Seeding and clean-up | 3d | 2025-08-28 | 2025-09-02 | A1800, A1340 |  |
|  | Deleted | **Deleted Activities** |  | 2024-12-12 | 2024-12-12 |  |  |
| A1570 |  | Form Interior Bent Diaphragms - Deleted | 0d | 2024-12-12 A | 2024-12-12 A | M1050 SS | 100% |

## Version 2 (data date 2025-07-01, saved 2025-08-14, file 4386750u250701.xml)

Note of the change: chore: relocate project; feat: XER support + config + DB + UI; security: defusedxml; build: requirements + .gitignore; test: smoke

Last finish stays 2025-09-03. Complete tasks 70 → 85.

Changed:

| ID | Task | Start | Finish | Complete | Predecessors |
| --- | --- | --- | --- | --- | --- |
| A1020 | Traffic Control |  |  | 74% → 80% |  |
| A1030 | Construction Stakes, Lines, & Grades |  |  | 70% → 80% |  |
| A1040 | Install/Maintain Erosion Control |  |  | 70% → 80% |  |
| A1050 | Moving and Demo Items |  |  | 70% → 80% |  |
| Utility | **Utility Relocations** |  | 2025-07-22 → 2025-06-30 (-22d) |  |  |
| W1000 | Install Relocated Waterline - Directional Bore under creek | 2025-06-02 A | 2025-06-11 → 2025-06-12 A (+1d) | 0% → 100% |  |
| W1010 | Install Relocated Waterline - NE side of creek | 2025-06-12 A | 2025-06-17 A | 0% → 100% |  |
| W1020 | Install Relocated Waterline - NW side of creek | 2025-06-18 → 2025-06-13 A (-5d) | 2025-06-25 → 2025-06-18 A (-7d) | 0% → 100% |  |
| W1030 | Install Relocated Waterline - Crossing at 49+40 | 2025-06-26 → 2025-06-18 A (-8d) | 2025-06-30 → 2025-06-20 A (-10d) | 0% → 100% |  |
| W1040 | Install Relocated Waterline - South side of creek | 2025-07-01 → 2025-06-20 A (-11d) | 2025-07-11 → 2025-06-24 A (-17d) | 0% → 100% |  |
| W1050 | Waterline Testing and Tie-in | 2025-07-14 → 2025-06-24 A (-20d) | 2025-07-22 → 2025-06-30 A (-22d) | 0% → 100% |  |
| A1100 | Settlement Period - East side | 2025-02-28 A → 2025-03-04 A (+4d) |  |  |  |
| A1180 | Install Storm Drainage 45+30 - 42+23 LT |  | 2025-06-09 A | 35% → 100% |  |
| A1150 | Install Storm Drainage Crossline at 49+52 |  | 2025-06-02 A | 65% → 100% |  |
| A1160 | Install Storm Drainage Crossline at 48+19 | 2025-06-03 A | 2025-06-05 A | 0% → 100% |  |
| A1170 | Install Storm Drainage DP-400 | 2025-06-06 A | 2025-06-09 A | 0% → 100% |  |
| A1190 | Install Storm Drainage Crossline at 42+25 | 2025-06-10 → 2025-06-09 A (-1d) | 2025-06-12 A | 0% → 100% |  |
| A1200 | Install Storm Drainage 42+25 - 40+39 RT | 2025-06-13 → 2025-06-12 A (-1d) | 2025-06-18 → 2025-06-16 A (-2d) | 0% → 100% |  |
| A1210 | Install Storm Drainage Crossline at 40+39 | 2025-06-19 A | 2025-06-24 → 2025-06-20 A (-4d) | 0% → 100% |  |
| A1240 | Install Curb & Gutter 39+85 - 45+00 LT | 2025-07-01 → 2025-06-23 A (-8d) | 2025-07-02 → 2025-06-25 A (-7d) | 0% → 100% | A1230 → A1210 |
| A1250 | Install Curb & Gutter 46+15 - 51+00 LT | 2025-07-03 → 2025-06-25 A (-8d) | 2025-07-07 → 2025-07-02 (-5d) | 0% → 25% |  |
| A1220 | Install Curb & Gutter 51+00 - 46+15 RT | 2025-06-25 → 2025-07-01 (+6d) | 2025-06-26 → 2025-07-02 (+6d) |  |  |
| A1230 | Install Curb & Gutter 45+00 - 39+85 RT | 2025-06-27 → 2025-07-03 (+6d) | 2025-06-30 → 2025-07-07 (+7d) |  |  |
| A1260 | Install Sidewalk 50+15 - 51+00 LT |  |  |  | A1250 → A1230, A1250 |
| Grading-High | **Construct High St. Cul-de-Sac** | 2025-06-02 → 2025-07-01 (+29d) |  |  |  |
| A1350 | Rough Grading - Cul-de-Sac | 2025-06-02 → 2025-07-01 (+29d) | 2025-06-05 → 2025-07-07 (+32d) |  |  |
| Bridge Construction | **Bridge Construction** |  | 2025-06-20 → 2025-07-17 (+27d) |  |  |
| Superstructure | **Superstructure** |  | 2025-06-05 → 2025-07-07 (+32d) |  |  |
| A1690 | Wreck Overhangs | 2025-06-02 → 2025-07-01 (+29d) | 2025-06-05 → 2025-07-07 (+32d) |  |  |
| Approach | **Approach Slabs** |  | 2025-06-20 → 2025-07-17 (+27d) |  |  |
| A1740 | Pour Barrier Rail | 2025-06-02 → 2025-06-09 A (+7d) | 2025-06-09 → 2025-06-13 A (+4d) | 0% → 100% |  |
| A1750 | Profilograph | 2025-06-10 → 2025-07-01 (+21d) | 2025-06-10 → 2025-07-01 (+21d) |  |  |
| A1760 | Bridge Deck Grooving | 2025-06-11 → 2025-07-08 (+27d) | 2025-06-11 → 2025-07-08 (+27d) |  |  |
| A1770 | FP & W Approach Curbs | 2025-06-12 → 2025-07-09 (+27d) | 2025-06-18 → 2025-07-15 (+27d) |  |  |
| A1780 | Clean Up and Demobilize Bridge Construction | 2025-06-19 → 2025-07-16 (+27d) | 2025-06-20 → 2025-07-17 (+27d) |  |  |
| phase 2 | **Phase 2 - Asphalt Surface and Permanent Striping** | 2025-08-15 → 2025-06-24 (-52d) |  |  |  |
| A1800 | Install Guardrail | 2025-08-21 → 2025-06-24 A (-58d) | 2025-08-27 → 2025-08-20 (-7d) | 0% → 50% | A1790 → A1790 FF |
| A1830 | Final Seeding and clean-up | 2025-08-28 → 2025-08-21 (-7d) | 2025-09-02 → 2025-08-25 (-8d) |  |  |
